# 20120529

Schedule from MS Project, 2012-06-15 to 2013-04-01.
Liebherr Machines Bulle

## Calendars

- Standard: Mon-Fri 08:00-12:00, 13:00-17:00; Sat-Sun off. Exceptions (off unless hours are given): 2012-07-30 to 2012-08-17, 2012-12-24 to 2013-01-04.

## Resources

| Resource |
| --- |
| 2 |
| 1 |
| 4 |

## Schedule

| ID | WBS | Task | Duration | Start | Finish | Predecessors | Total slack | Free slack | Constraint | Resources | Work |
| --- | --- | --- | --- | --- | --- | --- | --- | --- | --- | --- | --- |
| 1 | 1 | Infrastructure Lidia | 11d | 2012-06-15 | 2012-06-29 |  | 0d |  | finish no earlier than 2012-06-29 |  |  |
| 2 | 2 | **Lidia features** | 147d | 2012-07-02 | 2013-02-26 | 1 | 0d |  |  |  | 1816h |
| 3 | 2.1 | **Information Screen** | 60d | 2012-07-02 | 2012-10-12 |  | 0d |  |  |  | 840h |
| 4 | 2.1.1 | **Communication Layer** | 20d | 2012-07-02 | 2012-07-27 |  | 0d |  |  |  | 320h |
| 5 | 2.1.1.1 | **UDS** | 20d | 2012-07-02 | 2012-07-27 |  | 0d |  |  |  | 160h |
| 6 | 2.1.1.1.1 | ECU Detection | 10d | 2012-07-02 | 2012-07-13 |  | 0d |  |  | 2 | 80h |
| 7 | 2.1.1.1.2 | Variable Retrieval | 10d | 2012-07-16 | 2012-07-27 | 6 | 0d |  |  | 2 | 80h |
| 8 | 2.1.1.2 | **Communication Session** | 20d | 2012-07-02 | 2012-07-27 |  | 0d |  |  |  | 160h |
| 9 | 2.1.1.2.1 | **Lidec 2** | 20d | 2012-07-02 | 2012-07-27 |  | 0d |  |  |  | 160h |
| 10 | 2.1.1.2.1.1 | ODX Provider | 10d | 2012-07-02 | 2012-07-13 |  | 0d |  |  | 2 | 80h |
| 11 | 2.1.1.2.1.2 | ECU Detection | 5d | 2012-07-16 | 2012-07-20 | 10 | 0d |  |  | 2 | 40h |
| 12 | 2.1.1.2.1.3 | Variable Retrieval | 5d | 2012-07-23 | 2012-07-27 | 11 | 0d |  |  | 2 | 40h |
| 13 | 2.1.2 | **Service Layer** | 20d | 2012-08-20 | 2012-09-14 | 4 | 0d |  |  |  | 280h |
| 14 | 2.1.2.1 | **Variable Retrieval Feature** | 10d | 2012-08-20 | 2012-08-31 |  | 5d | 0d |  |  | 80h |
| 15 | 2.1.2.1.1 | For Lidec 2 | 10d | 2012-08-20 | 2012-08-31 |  | 5d |  |  | 2 | 80h |
| 16 | 2.1.2.2 | **Feature Services** | 5d | 2012-09-03 | 2012-09-07 | 14 | 5d |  |  |  | 40h |
| 17 | 2.1.2.2.1 | Variable Retrieval | 5d | 2012-09-03 | 2012-09-07 |  | 5d |  |  | 2 | 40h |
| 18 | 2.1.2.3 | **Entities** | 10d | 2012-08-20 | 2012-08-31 |  | 0d |  |  |  | 80h |
| 19 | 2.1.2.3.1 | Ecu | 5d | 2012-08-20 | 2012-08-24 |  | 0d |  |  | 2 | 40h |
| 20 | 2.1.2.3.2 | Variables | 5d | 2012-08-27 | 2012-08-31 | 19 | 0d |  |  | 2 | 40h |
| 21 | 2.1.2.4 | **Ecu Detection Service** | 10d | 2012-09-03 | 2012-09-14 | 18 | 0d |  |  |  | 80h |
| 22 | 2.1.2.4.1 | Lidec 2 detector | 10d | 2012-09-03 | 2012-09-14 |  | 0d |  |  | 2 | 80h |
| 23 | 2.1.3 | **View** | 20d | 2012-09-17 | 2012-10-12 | 13 | 0d |  |  |  | 240h |
| 24 | 2.1.3.1 | Views Management Services | 5d | 2012-09-17 | 2012-09-21 |  | 0d |  |  | 4 | 40h |
| 25 | 2.1.3.2 | Navigation Service | 5d | 2012-09-24 | 2012-09-28 | 24 | 0d |  |  | 4 | 40h |

| ID | WBS | Task | Type | Duration | Start | Finish | Predecessors | Total slack | Resources | Work |
| --- | --- | --- | --- | --- | --- | --- | --- | --- | --- | --- |
| 26 | 2.1.3.3 | **Module Information Module** |  | 10d | 2012-10-01 | 2012-10-12 | 25 | 0d |  | 160h |
| 27 | 2.1.3.3.1 | Motor Information Tile View + View Model |  | 5d | 2012-10-01 | 2012-10-05 |  | 0d | 2 | 40h |
| 28 | 2.1.3.3.2 | View-related logic |  | 5d | 2012-10-08 | 2012-10-12 | 27 | 0d | 2 | 40h |
| 29 | 2.1.3.3.3 | Info View Model |  | 5d | 2012-10-01 | 2012-10-05 |  | 0d | 2 | 40h |
| 30 | 2.1.3.3.4 | Info View |  | 5d | 2012-10-08 | 2012-10-12 | 29 | 0d | 2 | 40h |
| 31 | 2.1.4 | Reserved | milestone | 0d | 2012-10-12 | 2012-10-12 | 23 | 0d | 4 |  |
| 32 | 2.2 | **Message Screen** |  | 29d | 2012-10-15 | 2012-11-22 | 3 | 0d |  | 400h |
| 33 | 2.2.1 | **Communication Layer** |  | 10d | 2012-10-15 | 2012-10-26 |  | 0d |  | 120h |
| 34 | 2.2.1.1 | **UDS** |  | 10d | 2012-10-15 | 2012-10-26 |  | 0d |  | 80h |
| 35 | 2.2.1.1.1 | Message Retrieval |  | 10d | 2012-10-15 | 2012-10-26 |  | 0d | 2 | 80h |
| 36 | 2.2.1.2 | **Communication Session** |  | 5d | 2012-10-15 | 2012-10-19 |  | 5d |  | 40h |
| 37 | 2.2.1.2.1 | **Lidec 2** |  | 5d | 2012-10-15 | 2012-10-19 |  | 5d |  | 40h |
| 38 | 2.2.1.2.1.1 | Message Retrieval |  | 5d | 2012-10-15 | 2012-10-19 |  | 5d | 2 | 40h |
| 39 | 2.2.2 | **Service Layer** |  | 10d | 2012-10-29 | 2012-11-09 | 33 | 0d |  | 160h |
| 40 | 2.2.2.1 | **Message Retrieval Feature** |  | 5d | 2012-10-29 | 2012-11-02 |  | 0d |  | 40h |
| 41 | 2.2.2.1.1 | For Lidec 2 |  | 5d | 2012-10-29 | 2012-11-02 |  | 0d | 2 | 40h |
| 42 | 2.2.2.2 | **Message Polling Feature** |  | 5d | 2012-10-29 | 2012-11-02 |  | 0d |  | 40h |
| 43 | 2.2.2.2.1 | For Lidec 2 |  | 5d | 2012-10-29 | 2012-11-02 |  | 0d | 2 | 40h |
| 44 | 2.2.2.3 | **Entities** |  | 5d | 2012-11-05 | 2012-11-09 | 40, 42 | 0d |  | 40h |
| 45 | 2.2.2.3.1 | Ecu |  | 2d | 2012-11-05 | 2012-11-06 |  | 0d | 1 | 16h |
| 46 | 2.2.2.3.2 | Messages |  | 3d | 2012-11-07 | 2012-11-09 | 45 | 0d | 1 | 24h |
| 47 | 2.2.2.4 | **Feature Service** |  | 5d | 2012-11-05 | 2012-11-09 | 40, 42 | 0d |  | 40h |
| 48 | 2.2.2.4.1 | Message Retrieval |  | 5d | 2012-11-05 | 2012-11-09 |  | 0d | 2 | 40h |
| 49 | 2.2.3 | **View** |  | 9d | 2012-11-12 | 2012-11-22 | 39 | 0d |  | 120h |
| 50 | 2.2.3.1 | Message Reader View Model |  | 3d | 2012-11-12 | 2012-11-14 |  | 0d | 2 | 24h |
| 51 | 2.2.3.2 | Message Reader View |  | 3d | 2012-11-15 | 2012-11-19 | 50 | 0d | 2 | 24h |
| 52 | 2.2.3.3 | Additionnal Infos View Model |  | 3d | 2012-11-12 | 2012-11-14 |  | 0d | 2 | 24h |
| 53 | 2.2.3.4 | Additional Info View |  | 3d | 2012-11-15 | 2012-11-19 | 52 | 0d | 2 | 24h |
| 54 | 2.2.3.5 | Message View |  | 3d | 2012-11-20 | 2012-11-22 | 51, 53 | 0d | 2 | 24h |
| 55 | 2.2.4 | Reserved | milestone | 0d | 2012-11-22 | 2012-11-22 | 49 | 0d | 4 |  |

| ID | WBS | Task | Type | Duration | Start | Finish | Predecessors | Total slack | Resources | Work |
| --- | --- | --- | --- | --- | --- | --- | --- | --- | --- | --- |
| 56 | 2.3 | **Variable Screen** |  | 24d | 2012-11-23 | 2013-01-09 | 32 | 0d |  | 120h |
| 57 | 2.3.1 | **Communication Layer** |  | 5d | 2012-11-23 | 2012-11-29 |  | 0d |  |  |
| 58 | 2.3.1.1 | **UDS** |  | 5d | 2012-11-23 | 2012-11-29 |  | 0d |  |  |
| 59 | 2.3.1.1.1 | Variable Pooling |  | 5d | 2012-11-23 | 2012-11-29 |  | 0d |  |  |
| 60 | 2.3.1.2 | **Communication Session** |  | 5d | 2012-11-23 | 2012-11-29 |  | 0d |  |  |
| 61 | 2.3.1.2.1 | **Lidec 2** |  | 5d | 2012-11-23 | 2012-11-29 |  | 0d |  |  |
| 62 | 2.3.1.2.1.1 | Variable Pooling |  | 5d | 2012-11-23 | 2012-11-29 |  | 0d |  |  |
| 63 | 2.3.2 | **Service Layer** |  | 10d | 2012-11-30 | 2012-12-13 | 57 | 0d |  |  |
| 64 | 2.3.2.1 | **Variable Pooling Feature** |  | 5d | 2012-11-30 | 2012-12-06 |  | 0d |  |  |
| 65 | 2.3.2.1.1 | For Lidec 2 |  | 5d | 2012-11-30 | 2012-12-06 |  | 0d |  |  |
| 66 | 2.3.2.2 | **Feature Service** |  | 5d | 2012-11-30 | 2012-12-06 |  | 0d |  |  |
| 67 | 2.3.2.2.1 | Variable Polling |  | 5d | 2012-11-30 | 2012-12-06 |  | 0d |  |  |
| 68 | 2.3.2.3 | Variable Monitoring Service |  | 5d | 2012-12-07 | 2012-12-13 | 64, 66 | 0d |  |  |
| 69 | 2.3.3 | **View** |  | 9d | 2012-12-14 | 2013-01-09 | 63 | 0d |  | 120h |
| 70 | 2.3.3.1 | **Variable Reader Module** |  | 9d | 2012-12-14 | 2013-01-09 |  | 0d |  | 120h |
| 71 | 2.3.3.1.1 | Variable Reader Tile |  | 3d | 2012-12-14 | 2012-12-18 |  | 0d | 2 | 24h |
| 72 | 2.3.3.1.2 | Variable Reader View Model |  | 3d | 2012-12-19 | 2012-12-21 | 71 | 0d | 2 | 24h |
| 73 | 2.3.3.1.3 | Variable Reader View |  | 3d | 2013-01-07 | 2013-01-09 | 72 | 0d | 2 | 24h |
| 74 | 2.3.3.1.4 | Variable Search Filter |  | 3d | 2012-12-14 | 2012-12-18 |  | 6d | 2 | 24h |
| 75 | 2.3.3.1.5 | Variable View Model |  | 3d | 2012-12-14 | 2012-12-18 |  | 6d | 2 | 24h |
| 76 | 2.3.4 | Reserved | milestone | 0d | 2013-01-09 | 2013-01-09 | 69 | 0d | 4 |  |
| 77 | 2.4 | **Oscilloscope Screen** |  | 29d | 2013-01-10 | 2013-02-19 | 56 | 0d |  | 376h |
| 78 | 2.4.1 | **Communication Layer** |  | 10d | 2013-01-10 | 2013-01-23 |  | 0d |  | 160h |
| 79 | 2.4.1.1 | **UDS** |  | 10d | 2013-01-10 | 2013-01-23 |  | 0d |  | 80h |
| 80 | 2.4.1.1.1 | Variable Group Retrieval |  | 5d | 2013-01-10 | 2013-01-16 |  | 0d | 2 | 40h |
| 81 | 2.4.1.1.2 | Variable Group Pooling |  | 5d | 2013-01-17 | 2013-01-23 | 80 | 0d | 2 | 40h |

| ID | WBS | Task | Type | Duration | Start | Finish | Predecessors | Total slack | Free slack | Constraint | Resources | Work |
| --- | --- | --- | --- | --- | --- | --- | --- | --- | --- | --- | --- | --- |
| 82 | 2.4.1.2 | **Communication Session** |  | 10d | 2013-01-10 | 2013-01-23 |  | 0d |  |  |  | 80h |
| 83 | 2.4.1.2.1 | Variable Group Retrieval |  | 5d | 2013-01-10 | 2013-01-16 |  | 0d |  |  | 2 | 40h |
| 84 | 2.4.1.2.2 | Variable Group Pooling |  | 5d | 2013-01-17 | 2013-01-23 | 83 | 0d |  |  | 2 | 40h |
| 85 | 2.4.2 | **Service Layer** |  | 10d | 2013-01-24 | 2013-02-06 | 78 | 0d |  |  |  | 80h |
| 86 | 2.4.2.1 | **Variable pollling** |  | 5d | 2013-01-24 | 2013-01-30 |  | 0d |  |  |  | 40h |
| 87 | 2.4.2.1.1 | For Lidec 2 |  | 5d | 2013-01-24 | 2013-01-30 |  | 0d |  |  | 2 | 40h |
| 88 | 2.4.2.2 | **Feature Service** |  | 5d | 2013-01-24 | 2013-01-30 |  | 0d |  |  |  | 40h |
| 89 | 2.4.2.2.1 | Variable Polling |  | 5d | 2013-01-24 | 2013-01-30 |  | 0d |  |  | 2 | 40h |
| 90 | 2.4.2.3 | Variable Monitoring Service |  | 5d | 2013-01-31 | 2013-02-06 | 86, 88 | 0d |  |  |  |  |
| 91 | 2.4.3 | **View** |  | 9d | 2013-02-07 | 2013-02-19 | 85 | 0d |  |  |  | 136h |
| 92 | 2.4.3.1 | **Oscilloscope View** |  | 9d | 2013-02-07 | 2013-02-19 |  | 0d |  |  |  | 136h |
| 93 | 2.4.3.1.1 | Oscilloscope Tile |  | 2d | 2013-02-07 | 2013-02-08 |  | 0d |  |  | 2 | 16h |
| 94 | 2.4.3.1.2 | Oscilloscope Main View Model |  | 2d | 2013-02-11 | 2013-02-12 | 93 | 0d |  |  | 2 | 16h |
| 95 | 2.4.3.1.3 | Oscilloscope Main View |  | 2d | 2013-02-13 | 2013-02-14 | 94 | 0d |  |  | 2 | 16h |
| 96 | 2.4.3.1.4 | Legend View |  | 3d | 2013-02-15 | 2013-02-19 | 95 | 0d |  |  | 2 | 24h |
| 97 | 2.4.3.1.5 | Chart View |  | 3d | 2013-02-07 | 2013-02-11 |  | 1d | 0d |  | 2 | 24h |
| 98 | 2.4.3.1.6 | Settings View Model |  | 2d | 2013-02-12 | 2013-02-13 | 97 | 1d | 0d |  | 2 | 16h |
| 99 | 2.4.3.1.7 | Settings View |  | 3d | 2013-02-14 | 2013-02-18 | 98 | 1d |  |  | 2 | 24h |
| 100 | 2.4.4 | Reserved | milestone | 0d | 2013-02-19 | 2013-02-19 | 91 | 0d |  |  |  |  |
| 101 | 2.5 | **PAMS Security** |  | 5d | 2013-02-20 | 2013-02-26 | 77 | 0d |  |  |  | 80h |
| 102 | 2.5.1 | Integration |  | 5d | 2013-02-20 | 2013-02-26 |  | 0d |  |  | 2 | 40h |
| 103 | 2.5.2 | View |  | 5d | 2013-02-20 | 2013-02-26 |  | 0d |  |  | 2 | 40h |
| 104 | 2.5.3 | Reserved | milestone | 0d | 2013-02-26 | 2013-02-26 | 102, 103 | 0d |  |  | 4 |  |
| 105 | 3 | Reserved |  | 23d | 2013-02-27 | 2013-03-29 | 101 | 0d |  |  |  |  |
| 106 | 4 | Lidia 1.0 Alpha 1 | milestone | 1d? | 2012-10-15 | 2012-10-15 | 3 | 112d |  | start no earlier than 2012-09-03 |  |  |
| 107 | 5 | Lidia 1.0 Alpha 2 | milestone | 1d? | 2012-11-23 | 2012-11-23 | 32 | 83d |  | start no earlier than 2012-10-01 |  |  |
| 108 | 6 | Lidia 1.0 Alpha 3 | milestone | 1d? | 2013-01-10 | 2013-01-10 | 56 | 59d |  | start no earlier than 2012-11-01 |  |  |
| 109 | 7 | Lidia 1.0 Beta 1 | milestone | 1d? | 2013-02-20 | 2013-02-20 | 77 | 30d |  | start no earlier than 2012-12-03 |  |  |
| 110 | 8 | Lidia 1.0 RC | milestone | 1d? | 2013-02-27 | 2013-02-27 | 101 | 25d |  | start no earlier than 2013-01-15 |  |  |
| 111 | 9 | Lidia Released | milestone | 1d? | 2013-04-01 | 2013-04-01 | 105 | 0d |  | start no earlier than 2013-03-01 |  |  |
